# WBS Teresa martin mejoras

Schedule from MS Project, 2015-04-27 to 2015-06-30, costs in $.

## Calendars

- Estándar: Mon-Fri 09:00-13:00, 15:00-19:00; Sat-Sun off.

## Resources

| Resource | Rate |
| --- | --- |
| Lider | 233 |
| Analista | 125 |
| Diseñador | 149 |
| Programador | 110 |
| Tester | 115 |

## Schedule

| ID | WBS | Task | Duration | Start | Finish | Predecessors | Total slack | Free slack | Constraint | Resources | Work | Cost |
| --- | --- | --- | --- | --- | --- | --- | --- | --- | --- | --- | --- | --- |
| 1 | 1 | **Teresa Martin** | 47d | 2015-04-27 09:00 | 2015-06-30 19:00 |  | 0d |  |  |  | 474h | 42,567 |
| 2 | 1.1 | **1- Análisis** | 8d | 2015-04-27 09:00 | 2015-05-06 19:00 |  |  |  |  |  | 58h | 6,243 |
| 3 | 1.1.1 | 1.1-Carta de iniciación del proyecto. | 2h | 2015-04-27 09:00 | 2015-04-27 11:00 |  | 8.12d |  |  | Lider | 2h | 238 |
| 4 | 1.1.2 | **1.2-Elicitacion** | 1.75d | 2015-04-27 09:00 | 2015-04-28 17:00 |  | 1.38d | 0.25d |  |  | 14h | 1,336 |
| 5 | 1.1.2.1 | 1.2.1- Evaluar proveedores de req. a entrevistar | 4h | 2015-04-27 09:00 | 2015-04-27 13:00 |  | 1.38d | 0d |  | Lider | 4h | 476 |
| 6 | 1.1.2.2 | 1.2.2- Definicion de estrategia de recoleccion de req. | 4h | 2015-04-27 15:00 | 2015-04-27 19:00 | 5 | 1.38d | 0d | start no earlier than 2015-04-07 09:00 | Analista | 4h | 344 |
| 7 | 1.1.2.3 | 1.2.3- Planificar reuniones de elicitación de req. | 3h | 2015-04-28 09:00 | 2015-04-28 12:00 | 6 | 1.38d | 0d |  | Analista | 3h | 258 |
| 8 | 1.1.2.4 | 1.2.4- Identificar procesos del sistema. | 3h | 2015-04-28 12:00 | 2015-04-28 17:00 | 7 | 1.38d | 0d | start no earlier than 2015-04-08 09:00 | Analista | 3h | 258 |
| 9 | 1.1.3 | 1.3- Minuta de reunión de arranque. | 2h | 2015-04-28 17:00 | 2015-04-28 19:00 | 8 | 1.38d | 0d | start no earlier than 2015-04-08 09:00 | Lider | 2h | 238 |
| 10 | 1.1.4 | **1.4- Planeación de proyecto.** | 2d | 2015-04-29 09:00 | 2015-04-30 19:00 | 4 | 1.38d | 0.75d |  |  | 16h | 1,871 |
| 11 | 1.1.4.1 | 1.4.1- Descripción de la problemática. | 1h | 2015-04-29 09:00 | 2015-04-29 10:00 | 9 | 1.38d | 0d |  | Analista | 1h | 86 |
| 12 | 1.1.4.2 | 1.4.2- Organigrama. | 1h | 2015-04-29 10:00 | 2015-04-29 11:00 | 11 | 1.38d | 0d |  | Lider | 1h | 119 |
| 13 | 1.1.4.3 | 1.4.3- Alcance. | 1h | 2015-04-29 11:00 | 2015-04-29 12:00 | 12 | 1.38d | 0d |  | Lider | 1h | 119 |
| 14 | 1.1.4.4 | 1.4.4- Elementos clave para su planeación, monitoreo y control. | 2h | 2015-04-29 12:00 | 2015-04-29 16:00 | 13 | 1.38d | 0d |  | Lider | 2h | 238 |
| 15 | 1.1.4.5 | 1.4.5- Perfiles de los participantes y del administrador. | 3h | 2015-04-29 16:00 | 2015-04-29 19:00 | 14 | 1.38d | 0d |  | Lider | 3h | 357 |
| 16 | 1.1.4.6 | **1.4.6- Diagrama de Gantt(Wbs).** | 1d | 2015-04-30 09:00 | 2015-04-30 19:00 | 15 | 1.38d |  |  |  | 8h | 952 |
| 17 | 1.1.4.6.1 | 1.4.6.1- Matriz de responsabilidades. | 4h | 2015-04-30 09:00 | 2015-04-30 13:00 | 15 | 1.38d | 0d |  | Lider | 4h | 476 |
| 18 | 1.1.4.6.2 | 1.4.6.2- Diagrama de la ruta critica. | 4h | 2015-04-30 15:00 | 2015-04-30 19:00 | 17 | 1.38d | 0d |  | Lider | 4h | 476 |
| 19 | 1.1.5 | 1.4.7- Lista de factores clave de desempeño. | 3h | 2015-05-01 09:00 | 2015-05-01 12:00 | 18 | 1.38d | 0d |  | Lider | 3h | 357 |
| 20 | 1.1.6 | 1.4.8- Matriz de comunicación y justificación. | 3h | 2015-05-01 12:00 | 2015-05-01 17:00 | 19 | 1.38d | 0d |  | Lider | 3h | 357 |
| 21 | 1.1.7 | **1.5- Definición de estandar de calidad.** | 1d | 2015-05-01 17:00 | 2015-05-04 17:00 | 10 | 1.38d | 0d |  |  | 8h | 952 |
| 22 | 1.1.7.1 | 1.5.1- Gestión del alcance. | 2h | 2015-05-01 17:00 | 2015-05-01 19:00 | 20 | 1.38d | 0d | start no earlier than 2015-04-14 09:00 | Lider | 2h | 238 |
| 23 | 1.1.7.2 | 1.5.2- Gestión del tiempo. | 2h | 2015-05-04 09:00 | 2015-05-04 11:00 | 22 | 1.38d | 0d |  | Lider | 2h | 238 |
| 24 | 1.1.7.3 | 1.5.3- Gestión de costos. | 2h | 2015-05-04 11:00 | 2015-05-04 13:00 | 23 | 1.38d | 0d |  | Lider | 2h | 238 |
| 25 | 1.1.7.4 | 1.5.4- Gestión de calidad. | 2h | 2015-05-04 15:00 | 2015-05-04 17:00 | 24 | 1.38d | 0d |  | Lider | 2h | 238 |

| ID | WBS | Task | Duration | Start | Finish | Predecessors | Total slack | Free slack | Constraint | Resources | Work | Cost |
| --- | --- | --- | --- | --- | --- | --- | --- | --- | --- | --- | --- | --- |
| 26 | 1.1.8 | **1.6- Definicion de ciclo de vida.** | 0.25d | 2015-05-04 17:00 | 2015-05-04 19:00 | 21 | 1.38d | 0d |  |  | 2h | 172 |
| 27 | 1.1.8.1 | 1.6.1- Justificación de los procesos. | 2h | 2015-05-04 17:00 | 2015-05-04 19:00 | 25 | 1.38d | 0d |  | Analista | 2h | 172 |
| 28 | 1.1.9 | **1.7- Script(plantilla) del proceso de admón.** | 1d | 2015-05-05 09:00 | 2015-05-05 19:00 | 26 | 1.38d |  |  |  |  |  |
| 29 | 1.1.9.1 | 1.7.1- Políticas. | 1d | 2015-05-05 09:00 | 2015-05-05 19:00 | 27 | 1.38d |  |  |  |  |  |
| 30 | 1.1.10 | 1.8- Mercado meta. | 2h | 2015-05-05 09:00 | 2015-05-05 11:00 | 27 | 2.12d |  |  | Analista | 2h | 172 |
| 31 | 1.1.11 | 1.9- Justificar el patrón de diseño a utilizar. | 2h | 2015-05-05 09:00 | 2015-05-05 11:00 | 27 | 2.12d |  |  | Diseñador | 2h | 206 |
| 32 | 1.1.12 | 1.10- Identificar los req. funcionales. | 3h | 2015-05-05 09:00 | 2015-05-05 12:00 | 27 | 1.88d | 0d |  | Analista | 3h | 258 |
| 33 | 1.1.13 | 1.11- Identificar los req. no funcionales. | 1h | 2015-05-05 12:00 | 2015-05-05 13:00 | 32 | 1.88d | 1.5d |  | Analista | 1h | 86 |
| 34 | 1.2 | **2- Diseño** | 4.88d | 2015-05-07 09:00 | 2015-05-13 18:00 | 2 | 0.38d | 0d |  |  | 39h | 3,490 |
| 35 | 1.2.1 | 2.1- Estructura del Proyecto. | 2h | 2015-05-07 09:00 | 2015-05-07 11:00 | 33 | 0.38d | 0d |  | Analista | 2h | 172 |
| 36 | 1.2.2 | 2.2-Diagrama de actividades. | 2h | 2015-05-07 11:00 | 2015-05-07 13:00 | 35 | 0.38d | 0d |  | Analista | 2h | 172 |
| 37 | 1.2.3 | 2.3- Diagramas de casos de uso. | 4h | 2015-05-07 15:00 | 2015-05-07 19:00 | 36 | 0.38d | 0d |  | Analista | 4h | 344 |
| 38 | 1.2.4 | 2.4- Diagramas de secuencia. | 3h | 2015-05-08 09:00 | 2015-05-08 12:00 | 37 | 0.38d | 0d | start no earlier than 2015-04-20 09:00 | Analista | 3h | 258 |
| 39 | 1.2.5 | 2.5- Diagra de clases. | 4h | 2015-05-08 12:00 | 2015-05-08 18:00 | 38 | 0.38d | 0d | start no earlier than 2015-04-20 09:00 | Analista | 4h | 344 |
| 40 | 1.2.6 | 2.6- Diagrama de rol. | 2h | 2015-05-08 18:00 | 2015-05-11 10:00 | 39 | 0.38d | 0d | start no earlier than 2015-04-21 09:00 | Analista | 2h | 172 |
| 41 | 1.2.7 | 2.7-Diagrama de interación. | 2h | 2015-05-11 10:00 | 2015-05-11 12:00 | 40 | 0.38d | 0d | start no earlier than 2015-04-21 09:00 | Analista | 2h | 172 |
| 42 | 1.2.8 | 2.8-Diagrama de componentes. | 2h | 2015-05-11 12:00 | 2015-05-11 16:00 | 41 | 0.38d | 0d | start no earlier than 2015-04-21 09:00 | Analista | 2h | 172 |
| 43 | 1.2.9 | 2.9- Diagrama despliegue. | 2h | 2015-05-11 16:00 | 2015-05-11 18:00 | 42 | 0.38d | 0d | start no earlier than 2015-04-21 09:00 | Analista | 2h | 172 |
| 44 | 1.2.10 | **2.10- Base de datos.** | 1d | 2015-05-11 18:00 | 2015-05-12 18:00 | 43 | 0.38d |  |  |  | 8h | 688 |
| 45 | 1.2.10.1 | 2.10.1- Diagrama entidad relación. | 4h | 2015-05-11 18:00 | 2015-05-12 12:00 | 43 | 0.38d | 0d |  | Analista | 4h | 344 |
| 46 | 1.2.10.2 | 2.10.2-Diagrama relacional. | 4h | 2015-05-12 12:00 | 2015-05-12 18:00 | 45 | 0.38d | 0d |  | Analista | 4h | 344 |
| 47 | 1.2.11 | 2.11- Maquetación. | 4h | 2015-05-12 18:00 | 2015-05-13 12:00 | 46 | 0.38d | 0d |  | Diseñador | 4h | 412 |
| 48 | 1.2.12 | 2.12- Mapa de naveción. | 4h | 2015-05-13 12:00 | 2015-05-13 18:00 | 47 | 0.38d |  |  | Diseñador | 4h | 412 |
| 49 | 1.3 | **3- Codificación** | 10.62d | 2015-05-13 18:00 | 2015-05-28 13:00 | 34 | 0.38d | 0d |  |  | 101h | 8,636 |
| 50 | 1.3.1 | 3.1-Creación de la DB. | 3h | 2015-05-13 18:00 | 2015-05-14 11:00 | 34 | 0.38d | 0d |  | Programador | 3h | 216 |
| 51 | 1.3.2 | 3.2-Conexión a DB. | 2h | 2015-05-14 11:00 | 2015-05-14 13:00 | 50 | 0.38d | 0d |  | Programador | 2h | 144 |

| ID | WBS | Task | Duration | Start | Finish | Predecessors | Total slack | Free slack | Constraint | Resources | Work | Cost |
| --- | --- | --- | --- | --- | --- | --- | --- | --- | --- | --- | --- | --- |
| 52 | 1.3.3 | **3.3- Módulo alumnos** | 4d | 2015-05-14 15:00 | 2015-05-20 13:00 | 51 | 0.38d | 0d |  |  | 32h | 2,800 |
| 53 | 1.3.3.1 | 3.3.1-Interfaz. | 16h | 2015-05-14 15:00 | 2015-05-18 13:00 | 51 | 0.38d | 0d | start no earlier than 2015-04-27 09:00 | Diseñador | 16h | 1,648 |
| 54 | 1.3.3.2 | 3.3.3-Alta de alumno. | 6h | 2015-05-18 15:00 | 2015-05-19 11:00 | 53 | 0.38d | 0d |  | Programador | 6h | 432 |
| 55 | 1.3.3.3 | 3.3.4-Baja de alumno. | 2h | 2015-05-19 11:00 | 2015-05-19 13:00 | 54 | 0.38d | 0d |  | Programador | 2h | 144 |
| 56 | 1.3.3.4 | 3.3.5-Actualización de alumno. | 5h | 2015-05-19 15:00 | 2015-05-20 10:00 | 55 | 0.38d | 0d | start no earlier than 2015-04-30 09:00 | Programador | 5h | 360 |
| 57 | 1.3.3.5 | 3.3.6- Consultar alumnos. | 3h | 2015-05-20 10:00 | 2015-05-20 13:00 | 56 | 0.38d | 0d | start no earlier than 2015-04-30 09:00 | Programador | 3h | 216 |
| 58 | 1.3.4 | **3.4-Módulo pagos** | 1.75d | 2015-05-20 15:00 | 2015-05-22 11:00 | 52 | 0.38d |  |  |  | 14h | 1,132 |
| 59 | 1.3.4.1 | 3.4.1- interfaz. | 4h | 2015-05-20 15:00 | 2015-05-20 19:00 | 57 | 0.38d | 0d |  | Diseñador | 4h | 412 |
| 60 | 1.3.4.2 | 3.4.2- Pago de colegiaturas. | 4h | 2015-05-21 09:00 | 2015-05-21 13:00 | 59 | 0.38d | 0d |  | Programador | 4h | 288 |
| 61 | 1.3.4.3 | 3.4.3- Editar pago. | 3h | 2015-05-21 15:00 | 2015-05-21 18:00 | 60 | 0.38d | 0d |  | Programador | 3h | 216 |
| 62 | 1.3.4.4 | 3.4.4- Eliminar pago. | 1h | 2015-05-21 18:00 | 2015-05-21 19:00 | 61 | 0.38d | 0d |  | Programador | 1h | 72 |
| 63 | 1.3.4.5 | 3.4.5- Consultar pago. | 2h | 2015-05-22 09:00 | 2015-05-22 11:00 | 62 | 0.38d | 0d |  | Programador | 2h | 144 |
| 64 | 1.3.5 | **3.5- Módulo becas** | 2.5d | 2015-05-22 11:00 | 2015-05-26 17:00 | 63 | 0.38d | 0d |  |  | 20h | 1,750 |
| 65 | 1.3.5.1 | 3.5.1- Interfaz. | 10h | 2015-05-22 11:00 | 2015-05-25 13:00 | 63 | 0.38d | 0d | finish no earlier than 2015-05-05 19:00 | Diseñador | 10h | 1,030 |
| 66 | 1.3.5.2 | 3.5.2- Asignar beca. | 3h | 2015-05-25 15:00 | 2015-05-25 18:00 | 65 | 0.38d | 0d |  | Programador | 3h | 216 |
| 67 | 1.3.5.3 | 3.5.3- Editar beca. | 3h | 2015-05-25 18:00 | 2015-05-26 11:00 | 66 | 0.38d | 0d | start no earlier than 2015-05-06 09:00 | Programador | 3h | 216 |
| 68 | 1.3.5.4 | 3.5.4- Eliminar beca. | 2h | 2015-05-26 11:00 | 2015-05-26 13:00 | 67 | 0.38d | 0d | start no earlier than 2015-05-07 09:00 | Programador | 2h | 144 |
| 69 | 1.3.5.5 | 3.5.6- Consultar beca. | 2h | 2015-05-26 15:00 | 2015-05-26 17:00 | 68 | 0.38d | 0d | start no earlier than 2015-05-07 09:00 | Programador | 2h | 144 |
| 70 | 1.3.6 | **3.6- Módulo Reportes** | 1d | 2015-05-26 17:00 | 2015-05-27 17:00 | 64 | 0.38d | 0d |  |  | 16h | 1,400 |
| 71 | 1.3.6.1 | 3.6.1- Interfaz. | 8h | 2015-05-26 17:00 | 2015-05-27 17:00 | 64 | 0.38d |  | finish no earlier than 2015-05-07 19:00 | Diseñador | 8h | 824 |
| 72 | 1.3.6.2 | 3.6.2- Consultar pagos. | 2h | 2015-05-26 17:00 | 2015-05-26 19:00 | 69 | 0.38d | 0d | start no earlier than 2015-05-08 09:00 | Programador | 2h | 144 |
| 73 | 1.3.6.3 | 3.6.3- Consultar alumnos. | 2h | 2015-05-27 09:00 | 2015-05-27 11:00 | 72 | 0.38d | 0d | start no earlier than 2015-05-08 09:00 | Programador | 2h | 144 |
| 74 | 1.3.6.4 | 3.6.4- Colsultar becas. | 2h | 2015-05-27 11:00 | 2015-05-27 13:00 | 73 | 0.38d | 0d | start no earlier than 2015-05-08 09:00 | Programador | 2h | 144 |
| 75 | 1.3.6.5 | 3.6.5- Consultar ciclos. | 2h | 2015-05-27 15:00 | 2015-05-27 17:00 | 74 | 0.38d | 0d | start no earlier than 2015-05-08 09:00 | Programador | 2h | 144 |

| ID | WBS | Task | Duration | Start | Finish | Predecessors | Total slack | Free slack | Constraint | Resources | Work | Cost |
| --- | --- | --- | --- | --- | --- | --- | --- | --- | --- | --- | --- | --- |
| 76 | 1.3.7 | **3.7- Módulo Ciclos** | 0.75d | 2015-05-27 17:00 | 2015-05-28 13:00 | 70 | 0.38d |  |  |  | 14h | 1,194 |
| 77 | 1.3.7.1 | 3.7.1- Interfaz. | 6h | 2015-05-27 17:00 | 2015-05-28 13:00 | 75 | 0.38d |  |  | Diseñador | 6h | 618 |
| 78 | 1.3.7.2 | 3.7.2- Asignar ciclo. | 2h | 2015-05-27 17:00 | 2015-05-27 19:00 |  | 0.62d | 0d | start no earlier than 2015-05-12 09:00 | Programador | 2h | 144 |
| 79 | 1.3.7.3 | 3.7.3- Editar ciclo. | 2h | 2015-05-28 09:00 | 2015-05-28 11:00 | 78 | 0.62d |  |  | Programador | 2h | 144 |
| 80 | 1.3.7.4 | 3.7.4- Eliminar ciclo. | 2h | 2015-05-28 09:00 | 2015-05-28 11:00 | 78 | 0.62d |  |  | Programador | 2h | 144 |
| 81 | 1.3.7.5 | 3.7.5- Consultar ciclo. | 2h | 2015-05-28 09:00 | 2015-05-28 11:00 | 78 | 0.62d | 0.25d |  | Programador | 2h | 144 |
| 82 | 1.4 | **4.-Pruebas** | 1d | 2015-05-28 15:00 | 2015-05-29 13:00 | 49 | 0.38d | 0d |  |  | 16h | 1,248 |
| 83 | 1.4.1 | 4.1-Pruebas unitarias. | 4h | 2015-05-28 15:00 | 2015-05-28 19:00 | 81 | 0.88d |  |  | Tester | 4h | 312 |
| 84 | 1.4.2 | 4.2-Pruebas de integración. | 4h | 2015-05-28 15:00 | 2015-05-28 19:00 | 81 | 0.38d | 0d |  | Tester | 4h | 312 |
| 85 | 1.4.3 | 4.3-Pruebas de rendimiento. | 4h | 2015-05-29 09:00 | 2015-05-29 13:00 | 84 | 0.38d |  |  | Tester | 4h | 312 |
| 86 | 1.4.4 | 4.4-Pruebas del sistema. | 4h | 2015-05-29 09:00 | 2015-05-29 13:00 | 84 | 0.38d |  |  | Tester | 4h | 312 |
| 87 | 1.5 | 5.- Entrega Versión 0.1 | 2h | 2015-05-29 15:00 | 2015-05-29 17:00 | 82 | 0.38d | 0d | start no earlier than 2015-05-14 09:00 | Lider | 2h | 238 |
| 88 | 1.6 | **1- Análisis versión 0.1** | 1.5d | 2015-05-29 17:00 | 2015-06-02 11:00 | 87 | 0d |  |  |  | 9h | 873 |
| 89 | 1.6.1 | 1.1- Identificar procesos del sistema. | 3h | 2015-05-29 17:00 | 2015-06-01 10:00 | 87 | 0.38d | 0d |  | Lider | 3h | 357 |
| 90 | 1.6.2 | 1.2- Minuta de reunión. | 2h | 2015-06-01 10:00 | 2015-06-01 12:00 | 89 | 0.38d |  |  | Analista | 2h | 172 |
| 91 | 1.6.3 | 1.3- Identificar los req. funcionales. | 2h | 2015-06-01 17:00 | 2015-06-01 19:00 | 90 | 0d |  | finish no earlier than 2015-06-01 19:00 | Analista | 2h | 172 |
| 92 | 1.6.4 | 1.4- Identificar los req. no funcionales. | 2h | 2015-06-02 09:00 | 2015-06-02 11:00 | 91 | 0d |  |  | Analista | 2h | 172 |
| 93 | 1.7 | **2- Diseño versión 0.1** | 1.12d | 2015-06-02 11:00 | 2015-06-03 12:00 | 88 | 0d |  |  |  | 9h | 808 |
| 94 | 1.7.1 | 2.1- Diagrama de rol. | 2h | 2015-06-02 11:00 | 2015-06-02 13:00 | 92 | 0d |  |  | Analista | 2h | 172 |
| 95 | 1.7.2 | 2.2-Diagrama de interación. | 2h | 2015-06-02 15:00 | 2015-06-02 17:00 | 94 | 0d |  |  | Analista | 2h | 172 |
| 96 | 1.7.3 | 2.3- Diagrama de componentes. | 2h | 2015-06-02 17:00 | 2015-06-02 19:00 | 95 | 0d |  | start no earlier than 2015-05-14 09:00 | Analista | 2h | 172 |
| 97 | 1.7.4 | 2.4- Diagrama despliegue. | 1h | 2015-06-03 09:00 | 2015-06-03 10:00 | 96 | 0d |  | start no earlier than 2015-05-14 09:00 | Analista | 1h | 86 |
| 98 | 1.7.5 | 2.5- Maquetación. | 1h | 2015-06-03 10:00 | 2015-06-03 11:00 | 97 | 0d |  |  | Diseñador | 1h | 103 |
| 99 | 1.7.6 | 2.6- Mapa de naveción. | 1h | 2015-06-03 11:00 | 2015-06-03 12:00 | 98 | 0d |  | start no earlier than 2015-05-14 09:00 | Diseñador | 1h | 103 |

| ID | WBS | Task | Duration | Start | Finish | Predecessors | Total slack | Resources | Work | Cost |
| --- | --- | --- | --- | --- | --- | --- | --- | --- | --- | --- |
| 100 | 1.8 | **3- Codificación versión 0.1** | 10d | 2015-06-03 12:00 | 2015-06-17 12:00 | 93 | 0d |  | 160h | 14,000 |
| 101 | 1.8.1 | **3.1-Corrección en alguno de los módulos.** | 10d | 2015-06-03 12:00 | 2015-06-17 12:00 | 99 | 0d |  | 160h | 14,000 |
| 102 | 1.8.1.1 | 3.1.1- Módulo alumnos versión0.1. | 16h | 2015-06-03 12:00 | 2015-06-05 12:00 | 99 | 0d | Programador; Diseñador | 32h | 2,800 |
| 103 | 1.8.1.2 | 3.1.2- Módulo pagos versión0.1. | 16h | 2015-06-05 12:00 | 2015-06-09 12:00 | 102 | 0d | Programador; Diseñador | 32h | 2,800 |
| 104 | 1.8.1.3 | 3.1.3- Módulo becas versión0.1. | 16h | 2015-06-09 12:00 | 2015-06-11 12:00 | 103 | 0d | Programador; Diseñador | 32h | 2,800 |
| 105 | 1.8.1.4 | 3.1.4- Módulo reportes versión0.1. | 16h | 2015-06-11 12:00 | 2015-06-15 12:00 | 104 | 0d | Programador; Diseñador | 32h | 2,800 |
| 106 | 1.8.1.5 | 3.1.5- Módulo ciclos versión0.1. | 16h | 2015-06-15 12:00 | 2015-06-17 12:00 | 105 | 0d | Diseñador; Programador | 32h | 2,800 |
| 107 | 1.9 | **4.-Pruebas versión 0.1** | 2d | 2015-06-17 12:00 | 2015-06-19 12:00 | 100 | 0d |  | 16h | 1,248 |
| 108 | 1.9.1 | 4.1-Pruebas unitarias versión0.1. | 4h | 2015-06-17 12:00 | 2015-06-17 18:00 | 106 | 0d | Tester | 4h | 312 |
| 109 | 1.9.2 | 4.2-Pruebas de integración versión0.1. | 4h | 2015-06-17 18:00 | 2015-06-18 12:00 | 108 | 0d | Tester | 4h | 312 |
| 110 | 1.9.3 | 4.3-Pruebas de rendimiento versión0.1. | 4h | 2015-06-18 12:00 | 2015-06-18 18:00 | 109 | 0d | Tester | 4h | 312 |
| 111 | 1.9.4 | 4.4-Pruebas del sistema versión0.1. | 4h | 2015-06-18 18:00 | 2015-06-19 12:00 | 110 | 0d | Tester | 4h | 312 |
| 112 | 1.10 | 5.- Entrega versión 0.2 | 3h | 2015-06-19 12:00 | 2015-06-19 17:00 | 107 | 0d | Lider | 3h | 357 |
| 113 | 1.11 | **1- Análisis versió 0.2** | 0.12d | 2015-06-19 17:00 | 2015-06-19 18:00 | 112 | 0d |  | 1h | 119 |
| 114 | 1.11.1 | 1.1- Minuta de reunión versión0.2. | 1h | 2015-06-19 17:00 | 2015-06-19 18:00 | 112 | 0d | Lider | 1h | 119 |
| 115 | 1.12 | **2- Diseño version 0.2** | 0.38d | 2015-06-19 18:00 | 2015-06-22 11:00 | 113 | 0d |  | 6h | 618 |
| 116 | 1.12.1 | 2.1- Maquetación versión0.2. | 3h | 2015-06-19 18:00 | 2015-06-22 11:00 | 114 | 0d | Diseñador | 3h | 309 |
| 117 | 1.12.2 | 2.2- Mapa de naveción versión0.2. | 3h | 2015-06-19 18:00 | 2015-06-22 11:00 | 114 | 0d | Diseñador | 3h | 309 |
| 118 | 1.13 | **3- Codificación versión0.2** | 2.12d | 2015-06-22 11:00 | 2015-06-24 12:00 | 115 | 0d |  | 17h | 1,224 |
| 119 | 1.13.1 | 3.1- Aceptación de los módulos. | 17h | 2015-06-22 11:00 | 2015-06-24 12:00 | 117 | 0d | Programador | 17h | 1,224 |
| 120 | 1.14 | **4.-Pruebas versión 0.2** | 2d | 2015-06-24 12:00 | 2015-06-26 12:00 | 118 | 0d |  | 16h | 1,248 |
| 121 | 1.14.1 | 4.1- Pruebas de rendimiento versión0.2. | 8h | 2015-06-24 12:00 | 2015-06-25 12:00 | 119 | 0d | Tester | 8h | 624 |
| 122 | 1.14.2 | 4.2- Pruebas del sistema 0.2. | 8h | 2015-06-25 12:00 | 2015-06-26 12:00 | 121 | 0d | Tester | 8h | 624 |
| 123 | 1.15 | **5.-Implementación** | 0.75d | 2015-06-26 12:00 | 2015-06-29 10:00 | 120 | 0d |  | 6h | 432 |
| 124 | 1.15.1 | 5.1-Elección del Hosting. | 3h | 2015-06-26 12:00 | 2015-06-26 17:00 | 122 | 0d | Programador | 3h | 216 |
| 125 | 1.15.2 | 5.2-Copiar los archivos fuente. | 3h | 2015-06-26 17:00 | 2015-06-29 10:00 | 124 | 0d | Programador | 3h | 216 |

| ID | WBS | Task | Duration | Start | Finish | Predecessors | Total slack | Constraint | Resources | Work | Cost |
| --- | --- | --- | --- | --- | --- | --- | --- | --- | --- | --- | --- |
| 126 | 1.16 | **6.-Cierre del Proyecto.** | 1.5d | 2015-06-29 10:00 | 2015-06-30 16:00 |  | 0d |  |  | 12h | 1,428 |
| 127 | 1.16.1 | 6.1-Carta de Aceptación. | 1h | 2015-06-29 10:00 | 2015-06-29 11:00 | 125 | 0d |  | Lider | 1h | 119 |
| 128 | 1.16.2 | 6.2-Acta de cierrede proyectos. | 1h | 2015-06-29 11:00 | 2015-06-29 12:00 | 127 | 0d |  | Lider | 1h | 119 |
| 129 | 1.16.3 | 6.3-Evaluación de desempeño. | 3h | 2015-06-29 12:00 | 2015-06-29 17:00 | 128 | 0d |  | Lider | 3h | 357 |
| 130 | 1.16.4 | 6.4-Liberación de recursos. | 2h | 2015-06-29 17:00 | 2015-06-29 19:00 | 129 | 0d |  | Lider | 2h | 238 |
| 131 | 1.16.5 | 6.5-Lecciones aprendidas. | 3h | 2015-06-30 09:00 | 2015-06-30 12:00 | 130 | 0d | start no earlier than 2015-06-12 09:00 | Lider | 3h | 357 |
| 132 | 1.16.6 | 6.6-Informe final(cierre). | 2h | 2015-06-30 12:00 | 2015-06-30 16:00 | 131 | 0d |  | Lider | 2h | 238 |
| 133 | 1.17 | 7.- Entrega final versión 0.3 | 3h | 2015-06-30 16:00 | 2015-06-30 19:00 | 132, 126 | 0d |  | Lider | 3h | 357 |
